Schedule from MS Project, 2015-02-10 to 2015-03-25.
Microsoft

## Calendars

- Estándar: Mon-Fri 09:00-13:00, 15:00-19:00; Sat-Sun off.

## Resources

| Resource |
| --- |
| Diego Pint |
| Diego Pinto |
| Alejandro Ortiz |
| Jefe de proyectos |

## Schedule

| ID | WBS | Task | Duration | Start | Finish | Predecessors | Total slack | Free slack | Constraint | Resources | Work |
| --- | --- | --- | --- | --- | --- | --- | --- | --- | --- | --- | --- |
| 1 | 1 | **Optimización Proceso Cotizantes sin solicitud de crédito Amicar** | 32d | 2015-02-10 | 2015-03-25 |  | 0d |  |  |  | 128h |
| 2 | 1.1 | **Ejecucion** | 31d | 2015-02-10 | 2015-03-24 |  | 0d |  |  |  | 104h |
| 3 | 1.1.1 | **Análisis** | 4d | 2015-02-10 | 2015-02-13 |  | 0d |  |  |  |  |
| 4 | 1.1.1.1 | Realizar Reunión de Control de Cambio | 1d | 2015-02-10 | 2015-02-10 |  | 0d |  | start no earlier than 2015-02-10 |  |  |
| 5 | 1.1.1.2 | Generar Documento de Diseño Lógico | 3d | 2015-02-11 | 2015-02-13 | 4 | 0d |  |  |  |  |
| 6 | 1.1.2 | **Diseño** | 3d | 2015-02-12 | 2015-02-16 |  | 26d | 0d |  |  |  |
| 7 | 1.1.2.1 | Generar Diseño Físico | 2d | 2015-02-12 | 2015-02-13 |  | 26d | 0d | start no earlier than 2015-02-12 |  |  |
| 8 | 1.1.2.2 | Generar Plan de Pruebas | 1d | 2015-02-16 | 2015-02-16 | 5, 7 | 26d |  |  |  |  |
| 9 | 1.1.3 | **Construcción** | 13d | 2015-02-16 | 2015-03-04 |  | 0d |  |  |  | 104h |
| 10 | 1.1.3.1 | **Desarrollo** | 13d | 2015-02-16 | 2015-03-04 |  | 0d |  |  |  | 104h |
| 11 | 1.1.3.1.1 | **Entregable 1 > Generacion Body Cliente** | 4d | 2015-02-16 | 2015-02-19 |  | 0d |  |  |  |  |
| 12 | 1.1.3.1.1.1 | Generacion Body Cliente 1 | 1d | 2015-02-16 | 2015-02-16 | 5 | 0d |  |  |  |  |
| 13 | 1.1.3.1.1.2 | Generacion Body Cliente 2 | 1d | 2015-02-17 | 2015-02-17 | 12 | 0d |  |  |  |  |
| 14 | 1.1.3.1.1.3 | Generacion Body Cliente 3 | 1d | 2015-02-18 | 2015-02-18 | 13 | 0d |  |  |  |  |
| 15 | 1.1.3.1.1.4 | Actualizar la documentación | 1d | 2015-02-19 | 2015-02-19 | 14 | 0d |  |  |  |  |
| 16 | 1.1.3.1.2 | **Entregable 2 > Generacion Body Ejecutivo** | 3d | 2015-02-20 | 2015-02-24 |  | 0d |  |  |  |  |
| 17 | 1.1.3.1.2.1 | Generacion Body Ejecutivo 1 | 2d | 2015-02-20 | 2015-02-23 | 15 | 0d |  |  |  |  |
| 18 | 1.1.3.1.2.2 | Actualizar la documentación | 1d | 2015-02-24 | 2015-02-24 | 17 | 0d |  | start no earlier than 2015-02-18 |  |  |
| 19 | 1.1.3.1.3 | **Entregable 3 > Landing Page Cliente** | 3d | 2015-02-25 | 2015-02-27 |  | 0d |  |  |  | 24h |
| 20 | 1.1.3.1.3.1 | Generacion Landing Page Cliente | 2d | 2015-02-25 | 2015-02-26 | 18 | 0d |  |  | Diego Pinto | 16h |
| 21 | 1.1.3.1.3.2 | Actualizar Plan de Pruebas | 1d | 2015-02-27 | 2015-02-27 | 20 | 0d |  | start no earlier than 2015-02-20 | Diego Pinto | 8h |
| 22 | 1.1.3.1.4 | **Entregable 4 > Landing Page Ejecutivo** | 3d | 2015-03-02 | 2015-03-04 |  |  |  |  |  | 24h |
| 23 | 1.1.3.1.4.1 | Generacion Landing Page Ejecutivo | 2d | 2015-03-02 | 2015-03-03 | 21 | 0d |  |  | Diego Pinto | 16h |
| 24 | 1.1.3.1.4.2 | Actulizar Plan de Pruebas | 1d | 2015-03-04 | 2015-03-04 | 23 | 0d |  |  | Diego Pinto | 8h |

| ID | WBS | Task | Duration | Start | Finish | Predecessors | Total slack | Free slack | Constraint | Resources | Work |
| --- | --- | --- | --- | --- | --- | --- | --- | --- | --- | --- | --- |
| 25 | 1.1.3.1.5 | **Entregable 5 > Carga a BD ejecutivo y Diaria (Modificación )** | 5d | 2015-02-16 | 2015-02-20 |  | 5d |  |  |  | 40h |
| 26 | 1.1.3.1.5.1 | Modificacion BDD | 1d | 2015-02-16 | 2015-02-16 | 5 | 5d | 0d |  | Alejandro Ortiz | 8h |
| 27 | 1.1.3.1.5.2 | Modificacion Procesos Logicos | 3d | 2015-02-17 | 2015-02-19 | 26 | 5d | 0d |  | Alejandro Ortiz | 24h |
| 28 | 1.1.3.1.5.3 | Actualizar Plan de Pruebas | 1d | 2015-02-20 | 2015-02-20 | 27 | 5d |  | start no earlier than 2015-02-18 | Alejandro Ortiz | 8h |
| 29 | 1.1.3.1.6 | Pruebas Integrales | 1d | 2015-03-02 | 2015-03-02 | 28, 21 | 0d |  |  | Alejandro Ortiz; Diego Pinto | 16h |
| 30 | 1.1.3.2 | **Generar Manuales** | 1d | 2015-03-03 | 2015-03-03 |  | 16d |  |  |  |  |
| 31 | 1.1.3.2.1 | Generar Manual de Sistema | 1d | 2015-03-03 | 2015-03-03 | 29 | 16d |  |  |  |  |
| 32 | 1.1.3.2.2 | Generar Manual de Operación | 1d | 2015-03-03 | 2015-03-03 | 29 | 16d |  |  |  |  |
| 33 | 1.1.3.2.3 | Generar Manual de Instalación | 1d | 2015-03-03 | 2015-03-03 | 29 | 16d |  |  |  |  |
| 34 | 1.1.3.2.4 | Generar Manual de Usuario | 1d | 2015-03-03 | 2015-03-03 | 29 | 16d |  |  |  |  |
| 35 | 1.1.3.3 | **Actualizar Plan de Pruebas** | 1d | 2015-03-03 | 2015-03-03 |  | 0d |  |  |  |  |
| 36 | 1.1.3.3.1 | Actualizar Documento Plan de Pruebas | 1d | 2015-03-03 | 2015-03-03 | 29 | 16d |  |  |  |  |
| 37 | 1.1.3.3.2 | Validar el Plan de Pruebas | 1d | 2015-03-03 | 2015-03-03 | 29 | 0d |  |  |  |  |
| 38 | 1.1.4 | **Pruebas** | 1d | 2015-03-04 | 2015-03-04 |  | 0d |  |  |  |  |
| 39 | 1.1.4.1 | Preparar los ambientes de pruebas necesarios | 1d | 2015-03-04 | 2015-03-04 | 37 | 15d |  |  |  |  |
| 40 | 1.1.4.2 | Preparar datos de Prueba | 1d | 2015-03-04 | 2015-03-04 | 37 | 15d |  |  |  |  |
| 41 | 1.1.4.3 | Obtener Aprobación Plan de Prueba con Usuario | 1d | 2015-03-04 | 2015-03-04 | 37 | 15d |  | start no earlier than 2015-02-20 |  |  |
| 42 | 1.1.4.4 | Tcp | 1d | 2015-03-04 | 2015-03-04 | 37 | 0d |  |  |  |  |
| 43 | 1.1.5 | **Pre-Producción** | 30d | 2015-02-11 | 2015-03-24 |  | 1d |  |  |  |  |
| 44 | 1.1.5.1 | Generar y ejecutar Check List de Pre-Producción | 1d | 2015-02-11 | 2015-02-11 | 4 | 30d |  |  |  |  |
| 45 | 1.1.5.2 | Solicitar Ambiente de Pre-Producción | 1d | 2015-02-11 | 2015-02-11 | 4 | 15d |  |  |  |  |
| 46 | 1.1.5.3 | Instalar solución en ambiente de Pre-Producción | 1d | 2015-03-05 | 2015-03-05 | 45, 42 | 0d |  |  |  |  |
| 47 | 1.1.5.4 | **Pruebas de Fábrica** | 1d | 2015-03-06 | 2015-03-06 |  | 0d |  |  |  |  |
| 48 | 1.1.5.4.1 | Realizar las pruebas | 1d | 2015-03-06 | 2015-03-06 | 46 | 13d |  |  |  |  |
| 49 | 1.1.5.4.2 | Reportar las incidencias | 1d | 2015-03-06 | 2015-03-06 | 46 | 13d |  |  |  |  |
| 50 | 1.1.5.4.3 | Corregir las incidencias | 1d | 2015-03-06 | 2015-03-06 | 46 | 13d |  |  |  |  |
| 51 | 1.1.5.4.4 | Generar informes de pruebas | 1d | 2015-03-06 | 2015-03-06 | 46 | 13d |  |  |  |  |
| 52 | 1.1.5.4.5 | Actualizar documento de plan de pruebas | 1d | 2015-03-06 | 2015-03-06 | 46 | 13d |  |  |  |  |
| 53 | 1.1.5.4.6 | Certificación Pruebas de Fábrica | 1d | 2015-03-06 | 2015-03-06 | 46 | 0d |  |  |  |  |

| ID | WBS | Task | Duration | Start | Finish | Predecessors | Total slack | Resources | Work |
| --- | --- | --- | --- | --- | --- | --- | --- | --- | --- |
| 54 | 1.1.5.5 | **Pruebas de Usuario** | 1d | 2015-03-09 | 2015-03-09 |  | 0d |  |  |
| 55 | 1.1.5.5.1 | Realizar las pruebas | 1d | 2015-03-09 | 2015-03-09 | 53 | 12d |  |  |
| 56 | 1.1.5.5.2 | Reportar las incidencias | 1d | 2015-03-09 | 2015-03-09 | 53 | 12d |  |  |
| 57 | 1.1.5.5.3 | Corregir las incidencias | 1d | 2015-03-09 | 2015-03-09 | 53 | 12d |  |  |
| 58 | 1.1.5.5.4 | Generar informes de pruebas | 1d | 2015-03-09 | 2015-03-09 | 53 | 12d |  |  |
| 59 | 1.1.5.5.5 | Actualizar documento de plan de pruebas | 1d | 2015-03-09 | 2015-03-09 | 53 | 12d |  |  |
| 60 | 1.1.5.5.6 | Certificación de pruebas área usuaria | 1d | 2015-03-09 | 2015-03-09 | 53 | 0d |  |  |
| 61 | 1.1.5.6 | **Pruebas Integrales** | 10d | 2015-03-10 | 2015-03-23 |  | 0d |  |  |
| 62 | 1.1.5.6.1 | Pruebas con Cliente AMICAR | 10d | 2015-03-10 | 2015-03-23 | 60 | 0d |  |  |
| 63 | 1.1.5.7 | **Producción** | 1d | 2015-03-24 | 2015-03-24 |  | 0d |  |  |
| 64 | 1.1.5.7.1 | Generar y ejecutar Check List de paso a producción | 1d | 2015-03-24 | 2015-03-24 | 62 | 1d |  |  |
| 65 | 1.1.5.7.2 | Solicitar paso a producción | 1d | 2015-03-24 | 2015-03-24 | 62 | 1d |  |  |
| 66 | 1.1.5.7.3 | Realizar el paso a producción | 1d | 2015-03-24 | 2015-03-24 | 62 | 0d |  |  |
| 67 | 1.2 | **Cierre** | 1d | 2015-03-25 | 2015-03-25 |  | 0d |  |  |
| 68 | 1.2.1 | Generar Lecciones Aprendidas | 1d | 2015-03-25 | 2015-03-25 | 66 | 0d |  |  |
| 69 | 1.2.2 | Realizar reunión de Cierre del proyecto | 1d | 2015-03-25 | 2015-03-25 | 66 | 0d |  |  |
| 70 | 1.2.3 | Generar Acta de Cierre | 1d | 2015-03-25 | 2015-03-25 | 66 | 0d |  |  |
| 71 | 1.3 | **Seguimiento y control** | 10d | 2015-02-17 | 2015-03-02 |  | 17d |  | 24h |
| 72 | 1.3.1 | Reunion cierre diseño y analisis | 1d | 2015-02-17 | 2015-02-17 | 6 | 26d | Jefe de proyectos | 8h |
| 73 | 1.3.2 | Reunion Cierre entregables 1-2 | 1d | 2015-02-25 | 2015-02-25 | 11, 16 | 20d | Jefe de proyectos | 8h |
| 74 | 1.3.3 | Reunion cierre desarrollo | 1d | 2015-03-02 | 2015-03-02 | 19, 25 | 17d | Jefe de proyectos | 8h |
